# STB & CCB Schedule for 4D BIM_220830

Schedule from Primavera P6, 2023-01-02 to 2025-05-20, data date 2023-01-01.
Must finish by 2024-12-31

## Calendars

- Standard 5 Day Workweek: Mon-Fri 08:00-11:59, 13:00-16:59; Sat-Sun off.
- TVEP-C(6days): Mon-Sat 08:00-11:59, 13:00-18:59; Sun off.

## Schedule

| ID | WBS | Activity | Type | Duration | Start | Finish | Predecessors | Constraint |
| --- | --- | --- | --- | --- | --- | --- | --- | --- |
|  | S | **Steam Turbine Building** |  |  | 2023-01-02 | 2025-05-20 |  |  |
|  | AR | **Architecture** |  |  | 2023-01-02 | 2025-03-28 |  |  |
|  | SB | **Turbine Building** |  |  | 2023-01-02 | 2025-03-28 |  |  |
| A1000 |  | ST Building - Excavation |  | 90d | 2023-01-02 | 2023-05-05 |  |  |
| A1010 |  | ST Building - Condensate Extraction Pump pit |  | 136.25d | 2023-02-06 | 2023-08-15 | A1000 SS+25d |  |
| A1030 |  | ST Building - Building Steel Structure Delivery | milestone | 0d | 2023-03-01 | 2023-03-01 | A1020 | mandatory finish 2023-02-28 |
| A1020 |  | ST Building - Building Foundation |  | 105d | 2023-06-01 | 2023-10-26 | A1000 FS+18.75d |  |
| A1040 |  | ST Building - Main Column & Roof Steel Structure Erection |  | 130d | 2023-09-18 | 2024-03-15 | A1030, A1020 SS+76.25d |  |
| A1060 |  | ST Building - Equipment Foundation |  | 126.25d | 2024-01-24 | 2024-07-18 | A1020 FS+63.75d |  |
| A1050 |  | ST Building - Auxiliary Steel Structure Erection |  | 186.25d | 2024-03-18 | 2024-12-03 | A1040 |  |
| A1080 |  | ST Building - Operating Floor Deck Plate & Concrete Work (Turbine Bay) |  | 57.5d | 2024-03-18 | 2024-06-05 | A1040 |  |
| A1100 |  | ST Building - Mezzanine Floor Deck Plate & Concrete Work (Turbine Bay) |  | 57.5d | 2024-03-18 | 2024-06-05 | A1040 |  |
| A1120 |  | ST Building - Roof Floor Deck Plate & Concrete Work |  | 35d | 2024-04-11 | 2024-05-30 | A1040 FS+18.75d |  |
| A1130 |  | ST Building - Metal Cladding |  | 170d | 2024-04-22 | 2024-12-13 | A1050 SS+25d |  |
| A1070 |  | ST Building - Ground Floor Slab Concrete |  | 91.25d | 2024-05-09 | 2024-09-13 | A1040 FS+38.75d |  |
| A1090 |  | ST Building - Operating Floor Deck Plate & Concrete Work (Aux. Bay) |  | 46.25d | 2024-06-05 | 2024-08-08 | A1080 |  |
| A1110 |  | ST Building - Mezzanine Floor Deck Plate & Concrete Work (Aux. Bay) |  | 52.5d | 2024-06-05 | 2024-08-16 | A1100 |  |
| A1140 |  | ST Building - Interior Work |  | 92.5d | 2024-10-02 | 2025-02-07 | A1070 FS+12.5d |  |
| A1150 |  | ST Building - Exterior & Finish Work |  | 115d | 2024-10-21 | 2025-03-28 | A1070 FS+25d |  |
|  | PI | **Piping** |  |  | 2023-11-07 | 2025-05-20 |  |  |
|  | CS | **Condensate System** |  |  | 2023-11-07 | 2024-03-21 |  |  |
| A1260 |  | Condensate System #1 - Piping Work |  | 75d | 2023-11-07 | 2024-02-20 | A1200 SS+31.25d |  |
| A1270 |  | Condensate System #1 - Hydro Test |  | 22.5d | 2024-02-20 | 2024-03-21 | A1260 |  |
|  | BA | **Boiler & Auxiliares** |  |  | 2024-03-21 | 2024-07-19 |  |  |
| A1280 |  | Boiler #1 - Insulation, Casting & Painting |  | 86.25d | 2024-03-21 | 2024-07-19 | A1270 |  |

| ID | WBS | Activity | Type | Duration | Start | Finish | Predecessors | Constraint |
| --- | --- | --- | --- | --- | --- | --- | --- | --- |
|  | FS | **Feedwater System** |  |  | 2024-01-02 | 2024-07-11 |  |  |
| A1290 |  | Feed Water System #1 - Piping Work |  | 102.5d | 2024-01-02 | 2024-05-23 | A1220 SS |  |
| A1300 |  | Feed Water System #1 - Hydro Test |  | 35d | 2024-05-23 | 2024-07-11 | A1290 |  |
|  | EC | **CWP Electro-Chlorination System** |  |  | 2024-02-06 | 2024-04-17 |  |  |
| A1310 |  | Electro Chlorination System - Package Piping Work |  | 35d | 2024-02-06 | 2024-03-26 | A1290 SS+25d |  |
| A1320 |  | Electro Chlorination System - Hydro Test |  | 16.25d | 2024-03-26 | 2024-04-17 | A1310 |  |
|  | CW | **Circulating Water System** |  |  | 2024-05-09 | 2025-05-20 |  |  |
| A1330 |  | Circulating Water System - Cw Piping Work (Power Block Area) |  | 108.75d | 2024-05-09 | 2024-10-09 | A1230 |  |
| A1340 |  | Circulating Water System - Cw Piping Work (Intake Line) |  | 176.25d | 2024-07-02 | 2025-03-05 | A1330 SS+37.5d |  |
| A1350 |  | Circulating Water System - Cw Piping Work (Discharge Line) |  | 137.5d | 2024-10-09 | 2025-04-18 | A1330 |  |
| A1360 |  | Circulating Water System - Hydro Test |  | 102.5d | 2024-12-26 | 2025-05-20 | A1350 SS+56.25d |  |
|  | G | **Steam Turbine & Generator** |  |  | 2023-01-02 | 2024-12-04 |  |  |
|  | AR | **Architecture** |  |  | 2023-01-02 | 2024-12-04 |  |  |
|  | ST | **Steam Turbine & Generator** |  |  | 2023-01-02 | 2024-12-04 |  |  |
| A1170 |  | ST #1 - Embedded Material Delivery to Site | milestone | 0d | 2023-01-02 | 2023-01-02 |  | mandatory finish 2022-11-15 |
| A1180 |  | ST #1 - Mat Foundation |  | 58.75d | 2023-05-08 | 2023-07-27 | A1000 |  |
| A1190 |  | ST #1 - Pedestal & Top Deck |  | 171.25d | 2023-07-27 | 2024-03-22 | A1180 |  |
| A1160 |  | ST #1,2 - Clean & Dirty Oil Tank Foundation |  | 57.5d | 2024-09-16 | 2024-12-04 | A1010 SS+5d, A1070 |  |
|  | PI | **Piping** |  |  | 2023-09-25 | 2024-07-12 |  |  |
|  | ST | **Steam Turbine & Generator** |  |  | 2023-09-25 | 2024-07-12 |  |  |
| A1200 |  | ST #1 - Steam Piping Erection |  | 117.5d | 2023-09-25 | 2024-03-06 |  | mandatory start 2023-09-24 |
| A1220 |  | ST #1 - Lube & Control Oil Piping |  | 51.25d | 2024-01-02 | 2024-03-13 | A1200 SS+71.25d |  |
| A1210 |  | ST #1 - Hydro Test for Steam Piping |  | 28.75d | 2024-03-06 | 2024-04-16 | A1200 |  |
| A1230 |  | ST #1 - Lube & Control Oil Flushing |  | 41.25d | 2024-03-13 | 2024-05-09 | A1220 |  |
| A1240 |  | ST #1 - Temp. Piping for Steam Blowing |  | 32.5d | 2024-05-09 | 2024-06-25 | A1230 |  |
| A1250 |  | ST #1 - Temp. Piping Hydro Test for Steam Blowing |  | 13d | 2024-06-25 | 2024-07-12 | A1240 |  |

| ID | WBS | Activity | Duration | Start | Finish | Predecessors | Calendar | TVEP - Lv1 Phase | TVEP - Lv2 Discipline | TVEP - Lv3 Unit | TVEP - Lv4 System |
| --- | --- | --- | --- | --- | --- | --- | --- | --- | --- | --- | --- |
|  | C | **Central Control Building** |  | 2023-01-02 | 2024-08-17 |  |  |  |  |  |  |
|  | AR | **Architecture** |  | 2023-01-02 | 2024-03-20 |  |  |  |  |  |  |
|  | CB | **Central Control Building** |  | 2023-01-02 | 2024-03-20 |  |  |  |  |  |  |
| C12ACB010 |  | Central Control Building - Excavation | 40d | 2023-01-02 | 2023-02-07 |  | TVEP-C(6days) | C | 02A | 1 | 17CB |
| C12ACB020 |  | Central Control Building - Basement Foundation | 45d | 2023-02-09 | 2023-03-22 | C12ACB010 FS+1.25d | TVEP-C(6days) | C | 02A | 1 | 17CB |
| C12ACB030 |  | Central Control Building - Basement Wall Concrete | 57.5d | 2023-03-23 | 2023-05-15 | C12ACB020 | TVEP-C(6days) | C | 02A | 1 | 17CB |
| C12ACB040 |  | Central Control Building - Ground Floor Slab & Column Concrete | 97.5d | 2023-05-16 | 2023-08-14 | C12ACB030 | TVEP-C(6days) | C | 02A | 1 | 17CB |
| C12ACB050 |  | Central Control Building - 1st Floor Slab & Column Concrete | 95d | 2023-07-11 | 2023-10-06 | C12ACB040 SS+60d | TVEP-C(6days) | C | 02A | 1 | 17CB |
| C12ACB080 |  | Central Control Building - Interior Work | 195d | 2023-08-15 | 2024-02-12 | C12ACB040, C12ACB070 FF+37.5d | TVEP-C(6days) | C | 02A | 1 | 17CB |
| C12ACB060 |  | Central Control Building - 2st Floor Slab & Column Concrete | 93.75d | 2023-09-05 | 2023-11-30 | C12ACB050 SS+60d | TVEP-C(6days) | C | 02A | 1 | 17CB |
| C12ACB090 |  | Central Control Building - Exterior & Finish Work | 187.5d | 2023-09-28 | 2024-03-20 | C12ACB040 FS+37.5d, C12ACB080 FF+18.75d, C13HCB010 FF+62.5d, C13HCB020 FF+5d, C16ECB030 FF | TVEP-C(6days) | C | 02A | 1 | 17CB |
| C12ACB070 |  | Central Control Building - Roof Girder & Slab Concrete | 57.5d | 2023-11-14 | 2024-01-05 | C12ACB060 FF+38.75d | TVEP-C(6days) | C | 02A | 1 | 17CB |
|  | HV | **HVAC** |  | 2023-06-19 | 2024-03-20 |  |  |  |  |  |  |
|  | CB | **Central Control Building** |  | 2023-06-19 | 2024-03-20 |  |  |  |  |  |  |
| C13HCB010 |  | Central Control Building - HVAC Plumbing Work | 178.75d | 2023-06-19 | 2023-12-01 | C12ACB040 SS+36.25d | TVEP-C(6days) | C | 03H | 1 | 17CB |
| C13HCB020 |  | Central Control Building - HVAC Duct & Piping (Incl. Insulation) | 207.5d | 2023-09-05 | 2024-03-15 | C12ACB050 SS+25d, C13HCB030 FF+17.5d | TVEP-C(6days) | C | 03H | 1 | 17CB |
| C13HCB030 |  | Central Control Building - HVAC Equipment Installation | 46.25d | 2024-01-17 | 2024-02-28 | C12ACB070 FS+11.25d | TVEP-C(6days) | C | 03H | 1 | 17CB |
| C13HCB040 |  | Central Control Building - HVAC Control System Installation | 22.5d | 2024-02-29 | 2024-03-20 | C13HCB030 | TVEP-C(6days) | C | 03H | 1 | 17CB |
|  | FF | **Fire Fighting** |  | 2023-09-26 | 2024-02-20 |  |  |  |  |  |  |
|  | CB | **Central Control Building** |  | 2023-09-26 | 2024-02-20 |  |  |  |  |  |  |
| C19FCB010 |  | Central Control Building - Fire Fighting Piping | 158.75d | 2023-09-26 | 2024-02-20 | C12ACB040 FS+45d | TVEP-C(6days) | C | 09F | 1 | 17CB |
|  | EL | **Electrical** |  | 2023-04-27 | 2024-03-20 |  |  |  |  |  |  |
|  | CB | **Central Control Building** |  | 2023-04-27 | 2024-03-20 |  |  |  |  |  |  |
| C16ECB010 |  | Central Control Building - Grounding Work | 233.75d | 2023-04-27 | 2023-11-30 | C12ACB030 SS+37.5d | TVEP-C(6days) | C | 06E | 1 | 17CB |
| C16ECB020 |  | Central Control Building - Cable Tray Installation | 191.25d | 2023-07-18 | 2024-01-11 | C12ACB050 SS+7.5d | TVEP-C(6days) | C | 06E | 1 | 17CB |
| C16ECB030 |  | Central Control Building - Building Electrical Work | 240d | 2023-08-10 | 2024-03-20 | C19FCB010 FF, C16ECB020 SS, C13HCB040 FF, C16ECB010 FF+75d | TVEP-C(6days) | C | 06E | 1 | 17CB |

| ID | WBS | Activity | Duration | Start | Finish | Predecessors | Calendar | TVEP - Lv1 Phase | TVEP - Lv2 Discipline | TVEP - Lv3 Unit | TVEP - Lv4 System |
| --- | --- | --- | --- | --- | --- | --- | --- | --- | --- | --- | --- |
|  | SG | **MV/LV Switchgear, DC & UPS, MCC** |  | 2023-09-13 | 2024-02-02 |  |  |  |  |  |  |
| C16ESG010 |  | Central Control Building - MV/LV SWGR & MCC Installation | 92.5d | 2023-09-13 | 2023-12-07 | C12ACB040 FS+31.25d | TVEP-C(6days) | C | 06E | 1 | 18SG |
| C16ESG030 |  | Central Control Building - DC & UPS Installation | 70d | 2023-09-18 | 2023-11-21 | C12ACB040 FS+36.25d | TVEP-C(6days) | C | 06E | 1 | 18SG |
| C16ESG040 |  | Central Control Building - Electrical Cabling & Termination | 138.75d | 2023-09-27 | 2024-02-02 | C16ESG010 FF+25d, C12ACB040 FS+46.25d, C16ESG030 FF | TVEP-C(6days) | C | 06E | 1 | 18SG |
|  | CI | **Instrumentation & Control** |  | 2023-12-05 | 2024-08-17 |  |  |  |  |  |  |
|  | DS | **Distributed Control System** |  | 2023-12-05 | 2024-08-17 |  |  |  |  |  |  |
| C17JDS010 |  | Distributed Control System (DCS) - Installation | 52.5d | 2023-12-05 | 2024-01-22 | C12ACB060 FS+3.75d | TVEP-C(6days) | C | 07J | 1 | 19DS |
| C17JDS020 |  | Distributed Control System (DCS) - Control Cabling & Termination | 223.75d | 2024-01-23 | 2024-08-17 | C17JDS010, C16ECB020 FF | TVEP-C(6days) | C | 07J | 1 | 19DS |

## Activity codes

| Code | Value | Meaning |
| --- | --- | --- |
| TVEP - Lv1 Phase | C | Construction |
| TVEP - Lv2 Discipline | 02A | Architecture |
| TVEP - Lv2 Discipline | 03H | HVAC |
| TVEP - Lv2 Discipline | 06E | Electrical |
| TVEP - Lv2 Discipline | 07J | Instrumentation & Control |
| TVEP - Lv2 Discipline | 09F | Fire Fighting |
| TVEP - Lv3 Unit | 1 | Unit #1 |
| TVEP - Lv4 System | 17CB | Central Control Building |
| TVEP - Lv4 System | 18SG | MV/LV Switchgear, DC&UPS, MCC |
| TVEP - Lv4 System | 19DS | Distributed Control System |
