# Training Project Schedule.xml

Schedule from MS Project XML, 2016-02-01 to 2017-04-26, status date 2016-03-01, A marks actual dates.
Synchro Software Ltd

## Calendars

- Standard: Mon-Fri 09:00-17:00; Sat-Sun off.

## Schedule

| ID | WBS | Task | Type | Duration | Start | Finish | Predecessors | Complete | Remaining | Total slack | Free slack | Constraint | Work | Actual work |
| --- | --- | --- | --- | --- | --- | --- | --- | --- | --- | --- | --- | --- | --- | --- |
| 1 | 1 | **Office Building, Core & Shell** |  | 323d | 2016-02-01 A | 2017-04-26 |  | 7% | 300.07d | 0d |  |  | 8968h | 240h |
| 2 | 1 | **Pre Construction** |  | 20d | 2016-02-01 A | 2016-02-26 A |  | 100% |  |  |  |  | 288h | 240h |
| 3 | 1.1 | Notice to Proceed | milestone | 0d | 2016-02-01 A | 2016-02-01 A |  | 100% |  |  |  | must start on 2016-02-01 |  |  |
| 4 | 1.2 | Building Permit |  | 20d | 2016-02-01 A | 2016-02-26 A | 3 | 100% |  |  |  |  | 160h | 160h |
| 5 | 1.3 | Award Subcontractors |  | 10d | 2016-02-01 A | 2016-02-12 A | 3 | 100% |  |  |  |  | 80h | 80h |
| 6 | 1.4 | Perimeter Fence |  | 3d | 2016-02-22 A | 2016-02-24 A | 5FS+5d | 100% |  |  |  | start no earlier than 2015-04-20 |  |  |
| 7 | 1.5 | Temporary Hard Standing |  | 1d | 2016-02-24 A | 2016-02-24 A | 6FS-1d | 100% |  |  |  |  |  |  |
| 8 | 1.6 | Field Office |  | 2d | 2016-02-25 A | 2016-02-26 A | 7 | 100% |  |  |  |  |  |  |
| 9 | 2 | **Material Procurement** |  | 70d | 2016-02-15 A | 2016-05-20 |  | 17% | 58.15d | 147d |  |  | 2160h |  |
| 10 | 2.1 | Structural Steel |  | 65d | 2016-02-15 A | 2016-05-13 | 5 | 17% | 54d | 0d |  |  |  |  |
| 11 | 2.2 | Glass Curtain Wall |  | 60d | 2016-02-15 A | 2016-05-06 | 5 | 18% | 49d | 101d | 70d |  |  |  |
| 12 | 2.3 | Elevator |  | 65d | 2016-02-15 A | 2016-05-13 | 5 | 17% | 54d | 152d | 67d |  |  |  |
| 13 | 2.4 | MEP Equipment |  | 70d | 2016-02-15 A | 2016-05-20 | 5 | 16% | 59d | 132d |  |  |  |  |
| 14 | 3 | **Construction** |  | 257d | 2016-02-29 A | 2017-02-21 |  |  | 256.37d | 46d |  |  | 6192h |  |
| 15 | 3.1 | **Site Construction** |  | 247d | 2016-02-29 A | 2017-02-07 |  | 1% | 243.37d | 20d |  |  | 952h |  |
| 16 | 3.1.1 | Foundation Excavation |  | 5d | 2016-02-29 A | 2016-03-04 | 4 | 20% | 4d | 10d | 0d |  |  |  |
| 17 | 3.1.2 | Structural Piles |  | 20d | 2016-03-07 | 2016-04-01 | 16 |  |  | 10d | 0d |  |  |  |
| 18 | 3.1.3 | Site Utilities |  | 40d | 2016-02-29 A | 2016-04-22 | 4 | 3% | 39d | 174d | 82d |  |  |  |
| 19 | 3.1.4 | Backfill / Compact Foundation Excavation |  | 5d | 2016-04-18 | 2016-04-22 | 26 |  |  | 45d | 0d |  |  |  |
| 20 | 3.1.5 | Crushed Gravel, Ground Floor |  | 5d | 2016-07-11 | 2016-07-15 | 53, 27 |  |  | 0d |  |  |  |  |
| 21 | 3.1.6 | Road / Parking Lot Preparation |  | 20d | 2016-12-21 | 2017-01-17 | 43, 82 |  |  | 29d | 0d |  |  |  |
| 22 | 3.1.7 | Road / Parking Lot Pavement |  | 6d | 2017-01-18 | 2017-01-25 | 21 |  |  | 29d |  |  |  |  |
| 23 | 3.1.8 | Site Improvements |  | 25d | 2016-12-21 | 2017-01-24 | 82 |  |  | 20d | 0d |  |  |  |
| 24 | 3.1.9 | Site Plantings |  | 10d | 2017-01-25 | 2017-02-07 | 23 |  |  | 20d |  |  |  |  |

| ID | WBS | Task | Duration | Start | Finish | Predecessors | Total slack | Free slack | Work |
| --- | --- | --- | --- | --- | --- | --- | --- | --- | --- |
| 25 | 3.2 | **Concrete** | 89d | 2016-04-04 | 2016-08-04 |  | 0d |  | 280h |
| 26 | 3.2.1 | Pile Caps | 10d | 2016-04-04 | 2016-04-15 | 17 | 10d | 0d |  |
| 27 | 3.2.2 | Grade Beams | 10d | 2016-04-25 | 2016-05-06 | 19, 26 | 45d |  |  |
| 28 | 3.2.4 | Slab on Grade | 3d | 2016-07-18 | 2016-07-20 | 20 | 0d |  |  |
| 29 | 3.2.5 | **Slab on Deck, 1st Floor** | 9d | 2016-07-21 | 2016-08-02 |  | 0d |  | 24h |
| 30 | 3.2.5.1 | **Slab on Deck, 1st Floor, Area 1** | 4d | 2016-07-21 | 2016-07-26 |  | 0d |  | 8h |
| 31 | 3.2.5.1.1 | Slab on Deck, 1st Floor, Area 1A | 1d | 2016-07-21 | 2016-07-21 | 28 | 0d |  |  |
| 32 | 3.2.5.1.2 | Slab on Deck, 1st Floor, Area 1B | 1d | 2016-07-22 | 2016-07-22 | 31 | 0d |  |  |
| 33 | 3.2.5.1.3 | Slab on Deck, 1st Floor, Area 1C | 1d | 2016-07-25 | 2016-07-25 | 32 | 0d |  |  |
| 34 | 3.2.5.1.4 | Slab on Deck, 1st Floor, Area 1D | 1d | 2016-07-26 | 2016-07-26 | 33 | 0d |  |  |
| 35 | 3.2.5.2 | **Slab on Deck, 1st Floor, Area 2** | 2d | 2016-07-27 | 2016-07-28 |  | 0d |  | 8h |
| 36 | 3.2.5.2.1 | Slab on Deck, 1st Floor, Area 2A | 1d | 2016-07-27 | 2016-07-27 | 34 | 0d |  |  |
| 37 | 3.2.5.2.2 | Slab on Deck, 1st Floor, Area 2B | 1d | 2016-07-28 | 2016-07-28 | 36 | 0d |  |  |
| 38 | 3.2.5.3 | **Slab on Deck, 1st Floor, Area 3** | 3d | 2016-07-29 | 2016-08-02 | 35 | 0d |  | 8h |
| 39 | 3.2.5.3.1 | Slab on Deck, 1st Floor, Area 3A | 1d | 2016-07-29 | 2016-07-29 |  | 0d |  |  |
| 40 | 3.2.5.3.2 | Slab on Deck, 1st Floor, Area 3B | 1d | 2016-08-01 | 2016-08-01 | 39 | 0d |  |  |
| 41 | 3.2.5.3.3 | Slab on Deck, 1st Floor, Area 3C | 1d | 2016-08-02 | 2016-08-02 | 40 | 0d |  |  |
| 42 | 3.2.6 | Slab on Deck, 2nd Floor / Low Roof | 1d | 2016-08-03 | 2016-08-03 | 29 | 0d |  |  |
| 43 | 3.2.7 | Slab on Deck, High Roof | 1d | 2016-08-04 | 2016-08-04 | 42, 52 | 0d |  |  |
| 44 | 3.3 | **Metals** | 195d | 2016-04-27 | 2017-01-24 |  | 10d |  | 968h |
| 45 | 3.3.1 | Base Plates | 3d | 2016-04-27 | 2016-04-29 | 26FS+7d | 10d |  |  |
| 46 | 3.3.2 | Structural Framing, Area 1 | 8d | 2016-05-16 | 2016-05-25 | 45, 10 | 0d |  |  |
| 47 | 3.3.3 | Structural Framing, Area 2 | 8d | 2016-05-26 | 2016-06-06 | 46 | 0d |  |  |
| 48 | 3.3.4 | Structural Framing, Area 3 | 10d | 2016-06-07 | 2016-06-20 | 47 | 0d |  |  |
| 49 | 3.3.5 | Structural Framing, Area 4 | 9d | 2016-06-21 | 2016-07-01 | 48 | 0d |  |  |
| 50 | 3.3.6 | Plumb/ Bolt / Weld Area 1 | 5d | 2016-05-26 | 2016-06-01 | 46 | 235d |  |  |
| 51 | 3.3.7 | Plumb/ Bolt / Weld Area 2 | 5d | 2016-06-07 | 2016-06-13 | 47 | 227d |  |  |
| 52 | 3.3.8 | Plumb/ Bolt / Weld Area 3 | 5d | 2016-06-21 | 2016-06-27 | 48 | 27d |  |  |
| 53 | 3.3.9 | Plumb/ Bolt / Weld Area 4 | 5d | 2016-07-04 | 2016-07-08 | 49 | 0d |  |  |
| 54 | 3.3.10 | Exterior Stairs | 8d | 2016-09-27 | 2016-10-06 | 75 | 103d | 73d |  |
| 55 | 3.3.11 | Interior Stairs, Ground Floor | 5d | 2016-08-03 | 2016-08-09 | 29 | 145d | 115d |  |
| 56 | 3.3.12 | Interior Stairs, First Floor | 5d | 2016-08-04 | 2016-08-10 | 42 | 144d | 114d |  |
| 57 | 3.3.13 | Handrails | 5d | 2017-01-18 | 2017-01-24 | 55, 56, 54, 84 | 30d |  |  |

| ID | WBS | Task | Duration | Start | Finish | Predecessors | Total slack | Free slack | Work |
| --- | --- | --- | --- | --- | --- | --- | --- | --- | --- |
| 58 | 3.4 | **Corrugated Metal Siding** | 47d | 2016-08-05 | 2016-10-10 |  | 0d |  | 408h |
| 59 | 3.4.1 | Exterior Metal Siding / Backup Framing (Front) | 6d | 2016-08-05 | 2016-08-12 | 43, 27 | 0d |  |  |
| 60 | 3.4.2 | Exterior Metal Siding / Backup Framing (Left) | 10d | 2016-08-15 | 2016-08-26 | 59 | 0d |  |  |
| 61 | 3.4.3 | Exterior Metal Siding / Backup Framing (Back) | 12d | 2016-08-29 | 2016-09-13 | 60 | 0d |  |  |
| 62 | 3.4.4 | Exterior Metal Siding / Backup Framing (Right) | 7d | 2016-09-14 | 2016-09-22 | 61 | 0d |  |  |
| 63 | 3.4.5 | Exterior Metal Siding / Backup Framing (Mechanical Room) | 12d | 2016-09-23 | 2016-10-10 | 62, 42FS+7d | 0d |  |  |
| 64 | 3.55 | **Masonry** | 12d | 2016-08-01 | 2016-08-16 |  | 85d |  | 120h |
| 65 | 3.4.6 | Blockwork / Elevator Shaft, Ground Floor | 4d | 2016-08-01 | 2016-08-04 | 28FS+7d | 85d | 0d |  |
| 66 | 3.4.7 | Blockwork / Elevator Shaft, 1st Floor | 4d | 2016-08-05 | 2016-08-10 | 65 | 85d | 0d |  |
| 67 | 3.4.8 | Blockwork / Elevator Shaft, 2nd Floor | 4d | 2016-08-11 | 2016-08-16 | 66 | 85d | 0d |  |
| 68 | 3.5 | **Doors and Windows** | 98d | 2016-08-15 | 2016-12-28 |  | 31d |  | 512h |
| 69 | 3.5.1 | Exterior Doors, Frames, Hardware | 4d | 2016-09-27 | 2016-09-30 | 75 | 112d |  |  |
| 70 | 3.5.2 | Interior Doors, Frames, Hardware | 6d | 2016-12-21 | 2016-12-28 | 81, 80, 79 | 49d |  |  |
| 71 | 3.5.3 | Glass Entry Doors | 7d | 2016-09-01 | 2016-09-09 | 72FF | 127d |  |  |
| 72 | 3.5.4 | Glass Curtain Wall (Front) | 20d | 2016-08-15 | 2016-09-09 | 59, 11, 43 | 31d | 0d |  |
| 73 | 3.5.5 | Punched Windows (Left) | 4d | 2016-09-12 | 2016-09-15 | 60, 72 | 31d | 0d |  |
| 74 | 3.5.6 | Punched Windows (Back) | 6d | 2016-09-16 | 2016-09-23 | 61, 73 | 31d | 0d |  |
| 75 | 3.5.7 | Punched Windows (Right) | 1d | 2016-09-26 | 2016-09-26 | 62, 74 | 31d | 0d |  |
| 76 | 1.3.5.8 | Punched Windows (Mechanical Room) | 1d | 2016-10-11 | 2016-10-11 | 63, 75 | 141d |  |  |
| 77 | 3.5.8 | Glass Railings | 4d | 2016-12-21 | 2016-12-26 | 82 | 51d |  |  |
| 78 | 3.6 | **Finishes** | 50d | 2016-11-09 | 2017-01-17 |  | 20d |  | 568h |
| 79 | 3.6.1 | Core Walls, Ground Floor | 10d | 2016-11-09 | 2016-11-22 | 87, 75 | 22d | 0d |  |
| 80 | 3.6.2 | Core Walls, 1st Floor | 10d | 2016-11-23 | 2016-12-06 | 79 | 22d | 0d |  |
| 81 | 3.6.3 | Core Walls, 2nd Floor | 10d | 2016-12-07 | 2016-12-20 | 80 | 22d | 0d |  |
| 82 | 3.6.4 | Perimeter Drywall | 20d | 2016-11-23 | 2016-12-20 | 88 | 20d | 0d |  |
| 83 | 3.6.5 | Toilet Room Finishes | 15d | 2016-12-21 | 2017-01-10 | 98, 99, 81 | 22d | 0d |  |
| 84 | 3.6.6 | Misc. Finishes | 20d | 2016-12-21 | 2017-01-17 | 82 | 20d | 0d |  |

| ID | WBS | Task | Duration | Start | Finish | Predecessors | Total slack | Free slack | Work |
| --- | --- | --- | --- | --- | --- | --- | --- | --- | --- |
| 85 | 3.7 | **Thermal and Moisture Protection** | 27d | 2016-10-17 | 2016-11-22 |  | 0d |  | 224h |
| 86 | 3.7.1 | Roofing, Low Roof | 12d | 2016-10-17 | 2016-11-01 | 42, 63, 91 | 0d |  |  |
| 87 | 3.7.2 | Roofing, High Roof | 5d | 2016-11-02 | 2016-11-08 | 86, 43 | 0d |  |  |
| 88 | 3.7.3 | Roof Parapet Cap / Trim | 10d | 2016-11-09 | 2016-11-22 | 75, 86, 87 | 0d |  |  |
| 89 | 3.7.4 | Temporary Roof at Skylight | 1d | 2016-11-09 | 2016-11-09 | 87 | 115d | 0d |  |
| 90 | 3.8 | **Specialties** | 27d | 2016-10-11 | 2016-11-16 |  | 0d |  | 80h |
| 91 | 3.8.1 | Mechanical Room Louvers | 4d | 2016-10-11 | 2016-10-14 | 63 | 0d |  |  |
| 92 | 3.8.2 | Glass Skylight | 5d | 2016-11-10 | 2016-11-16 | 89, 75 | 115d |  |  |
| 93 | 3.9 | **Conveying Systems** | 90d | 2016-07-11 | 2016-11-11 |  | 112d |  | 1040h |
| 94 | 3.9.1 | Elevator | 50d | 2016-08-17 | 2016-10-25 | 12, 67 | 85d |  |  |
| 95 | 3.9.2 | Temporary Hoist | 90d | 2016-07-11 | 2016-11-11 | 53 | 118d |  |  |
| 96 | 3.10 | **Mechanical** | 135d | 2016-08-17 | 2017-02-21 |  | 0d |  | 1448h |
| 97 | 3.10.1 | **Plumbing** | 113d | 2016-08-17 | 2017-01-20 |  | 22d |  | 328h |
| 98 | 3.10.1.1 | Domestic Water | 20d | 2016-08-17 | 2016-09-13 | 18, 67 | 92d | 70d |  |
| 99 | 3.10.1.2 | Sanitary Sewer | 20d | 2016-08-17 | 2016-09-13 | 18, 67 | 92d | 70d |  |
| 100 | 3.10.1.3 | Toilet Room Fixtures / Trim | 8d | 2017-01-11 | 2017-01-20 | 98, 13, 83, 99 | 22d |  |  |
| 101 | 3.10.2 | **HVAC** | 65d | 2016-11-23 | 2017-02-21 |  | 0d |  | 520h |
| 102 | 3.10.2.1 | Air Handling Unit | 20d | 2016-11-23 | 2016-12-20 | 13, 88 | 0d |  |  |
| 103 | 3.10.2.2 | Vertical Ductwork | 10d | 2016-12-21 | 2017-01-03 | 43, 67, 102, 13 | 0d |  |  |
| 104 | 3.10.2.3 | Horizontal Ductwork | 25d | 2017-01-04 | 2017-02-07 | 103, 91, 13 | 0d |  |  |
| 105 | 3.10.2.4 | Registers / Grilles / Diffusers | 10d | 2017-02-08 | 2017-02-21 | 104, 13 | 0d |  |  |
| 106 | 3.10.3 | **Electrical** | 55d | 2016-11-09 | 2017-01-24 |  | 20d |  | 600h |
| 107 | 3.10.3.1 | Main Switch Gear / Panelboards | 25d | 2016-11-23 | 2016-12-27 | 88, 18, 13 | 30d | 0d |  |
| 108 | 3.10.3.2 | Electrical Distribution | 35d | 2016-11-09 | 2016-12-27 | 87, 107FF | 30d | 0d |  |
| 109 | 3.10.3.3 | Electrical Devices | 10d | 2016-12-28 | 2017-01-10 | 108 | 30d |  |  |
| 110 | 3.10.3.4 | Light Fixtures | 5d | 2017-01-18 | 2017-01-24 | 108, 13, 84 | 20d |  |  |

| ID | WBS | Task | Type | Duration | Start | Finish | Predecessors | Total slack | Work |
| --- | --- | --- | --- | --- | --- | --- | --- | --- | --- |
| 111 | 4 | **Project Completion** |  | 46d | 2017-02-22 | 2017-04-26 |  | 0d | 328h |
| 112 | 4.1 | Commissioning of Mechanical Systems |  | 10d | 2017-02-22 | 2017-03-07 | 94, 105, 109, 100, 110 | 0d |  |
| 113 | 4.2 | Final Inspections |  | 10d | 2017-03-08 | 2017-03-21 | 24, 22, 112, 69, 70, 71, 77, 57 | 0d |  |
| 114 | 4.3 | Punch List |  | 10d | 2017-03-22 | 2017-04-04 | 113 | 0d |  |
| 115 | 4.4 | Final Clean |  | 10d | 2017-04-05 | 2017-04-18 | 113, 83, 84, 114 | 0d |  |
| 116 | 4.5 | Site De-Mobilization |  | 5d | 2017-04-19 | 2017-04-25 | 115, 8 | 0d |  |
| 117 | 4.6 | Certificate of Occupancy | milestone | 0d | 2017-04-04 | 2017-04-04 | 113, 114 | 15d |  |
| 118 | 4.7 | Project Turnover |  | 1d | 2017-04-26 | 2017-04-26 | 117, 116, 115, 114 | 0d |  |
